# 3-成本规划-程璐

How a schedule from MS Project changed from version to version. A marks actual dates.

## Version 1 (data date 2020-03-27, saved 2020-05-06)

| ID | WBS | Task | Duration | Start | Finish | Predecessors | Constraint |
| --- | --- | --- | --- | --- | --- | --- | --- |
| 1 | 1 | **启动** | 7.5d | 2020-03-03 | 2020-03-12 |  |  |
| 2 |  | 组建核心团队 | 0.5d | 2020-03-03 | 2020-03-03 |  | start no earlier than 2020-03-03 |
| 3 |  | 干系人分析 | 2d | 2020-03-06 | 2020-03-10 |  | start no earlier than 2020-03-06 |
| 4 |  | 里程碑计划 | 1d | 2020-03-09 | 2020-03-10 |  |  |
| 5 |  | 制定项目章程 | 1d | 2020-03-10 | 2020-03-11 | 2, 3, 4 |  |
| 6 |  | 项目启动大会 | 0.5d | 2020-03-12 | 2020-03-12 | 5 |  |
| 7 | 2 | **规划** | 29d | 2020-03-13 | 2020-04-21 |  |  |
| 8 | 2.1 | **规划范围** | 8.5d | 2020-03-13 | 2020-03-25 |  |  |
| 9 |  | 制定需求说明书 | 1d | 2020-03-13 | 2020-03-16 | 6 |  |
| 10 |  | 界面设计 | 4d | 2020-03-16 | 2020-03-20 | 9 |  |
| 11 |  | 详细设计说明书 | 3d | 2020-03-16 | 2020-03-19 | 9 |  |
| 12 |  | 范围说明书 | 2d | 2020-03-17 | 2020-03-19 | 9 |  |
| 13 |  | 创建WBS | 1d | 2020-03-20 | 2020-03-23 | 10, 11, 12 |  |
| 14 |  | 形成范围基准 | 2d | 2020-03-23 | 2020-03-25 | 13 |  |
| 15 | 2.2 | **规划时间** | 9d | 2020-03-25 | 2020-04-07 |  |  |
| 16 |  | 排列工作包顺序 | 1d | 2020-03-25 | 2020-03-26 | 14 |  |
| 17 |  | 估算资源 | 1d | 2020-03-27 | 2020-03-30 | 16 |  |
| 18 |  | 估算持续时间 | 1d | 2020-03-31 | 2020-04-01 | 17 |  |
| 19 |  | 制定进度计划 | 1d | 2020-04-02 | 2020-04-03 | 18 |  |
| 20 |  | 形成进度基准 | 2d | 2020-04-03 | 2020-04-06 | 19 |  |
| 21 | 2.3 | **规划成本** | 4d | 2020-04-07 | 2020-04-11 |  |  |
| 22 |  | 项目成本估算 | 1d | 2020-04-07 | 2020-04-08 | 20 |  |
| 23 |  | 项目预算 | 1d | 2020-04-09 | 2020-04-10 | 22 |  |
| 24 |  | 形成范围基准 | 1d | 2020-04-10 | 2020-04-11 | 23 |  |
| 25 | 2.4 | **规划质量** | 7d | 2020-03-30 | 2020-04-08 |  |  |
| 26 |  | 制定测试计划 | 2d | 2020-03-30 | 2020-04-01 | 14 |  |
| 27 |  | 制定测试用例 | 2d | 2020-04-06 | 2020-04-08 | 26 |  |
| 28 | 2.5 | **规划人力资源** | 4d | 2020-04-01 | 2020-04-07 |  |  |
| 29 |  | 制定人力资源计划 | 1d | 2020-04-01 | 2020-04-02 | 17 |  |
| 30 |  | 制定人员配备管理计划 | 1d | 2020-04-06 | 2020-04-07 | 29 |  |
| 31 | 2.6 | **规划沟通** | 2d | 2020-04-08 | 2020-04-10 |  |  |
| 32 |  | 制定沟通管理计划 | 2d | 2020-04-08 | 2020-04-10 | 30 |  |
| 33 | 2.7 | **规划采购** | 4d | 2020-04-01 | 2020-04-07 |  |  |
| 34 |  | 自制外购分析 | 2d | 2020-04-01 | 2020-04-03 | 17 |  |
| 35 |  | 制定采购文件 | 1d | 2020-04-06 | 2020-04-07 | 34 |  |
| 36 | 2.8 | **规划风险** | 6d | 2020-04-11 | 2020-04-16 |  |  |
| 37 |  | 识别风险 | 2d | 2020-04-11 | 2020-04-13 | 15, 21, 25, 28, 31, 33 |  |
| 38 |  | 风险分析 | 2d | 2020-04-13 | 2020-04-14 | 37 | start no earlier than 2020-04-13 |
| 39 |  | 制定风险登记册 | 2d | 2020-04-15 | 2020-04-16 | 38 | start no earlier than 2020-04-15 |
| 40 |  | 规划整合 | 2d | 2020-04-17 | 2020-04-20 | 39 |  |
| 41 | 3 | **执行与监控** | 44d | 2020-04-22 | 2020-06-22 |  |  |
| 42 |  | 组建项目团队 | 0.5d | 2020-04-22 | 2020-04-22 | 7 |  |
| 43 | 3.2 | **项目执行** | 38.5d | 2020-04-23 | 2020-06-16 |  |  |
| 44 | 3.2.1 | **用户模块** | 12.5d | 2020-04-23 | 2020-05-11 |  |  |
| 45 |  | 注册登录 | 2d | 2020-04-23 | 2020-04-24 | 42 |  |
| 46 |  | 首页 | 3d | 2020-04-28 | 2020-04-30 | 45 |  |
| 47 |  | 浏览商品 | 2d | 2020-05-01 | 2020-05-04 | 46 |  |
| 48 |  | 搜索商品 | 2d | 2020-05-05 | 2020-05-07 | 46 |  |
| 49 |  | 认证 | 1d | 2020-05-01 | 2020-05-01 | 46 |  |
| 50 |  | 订单管理 | 2d | 2020-05-07 | 2020-05-11 | 54 |  |
| 51 |  | 聊天 | 4d | 2020-05-01 | 2020-05-06 | 46 |  |
| 52 |  | 个人配置 | 2d | 2020-05-01 | 2020-05-04 | 46 |  |
| 53 | 3.2.1.9 | **买家模块** | 4d | 2020-05-05 | 2020-05-08 |  |  |
| 54 |  | 购物车 | 2d | 2020-05-05 | 2020-05-06 | 47 |  |
| 55 |  | 钓鱼 | 3d | 2020-05-05 | 2020-05-07 | 47 |  |
| 56 |  | 收藏 | 2d | 2020-05-05 | 2020-05-06 | 47 |  |
| 57 |  | 下单 | 2d | 2020-05-07 | 2020-05-08 | 54 |  |
| 58 | 3.2.1.10 | **卖家模块** | 2d | 2020-05-01 | 2020-05-04 |  |  |
| 59 |  | 商品发布 | 2d | 2020-05-01 | 2020-05-04 | 46 |  |
| 60 |  | 单元测试 | 3d | 2020-05-19 | 2020-05-21 | 44 |  |
| 61 | 3.2.3 | **管理模块** | 5d | 2020-05-20 | 2020-05-27 |  |  |
| 62 |  | 商品推送 | 3d | 2020-05-20 | 2020-05-25 | 42 |  |
| 63 |  | 广告管理 | 2d | 2020-05-20 | 2020-05-22 | 42 |  |
| 64 |  | 用户审核 | 1d | 2020-05-20 | 2020-05-21 | 42 |  |
| 65 |  | 统计分析 | 3d | 2020-05-20 | 2020-05-25 | 59 |  |
| 66 |  | 备份 | 2d | 2020-05-25 | 2020-05-27 | 65 |  |
| 67 |  | 单元测试 | 3d | 2020-06-11 | 2020-06-16 | 61 | start no earlier than 2020-06-11 |
| 68 | 3.3 | **项目监控** | 18.5d | 2020-04-23 | 2020-05-19 |  |  |
| 69 |  | 各项指标监控 | 2d | 2020-04-23 | 2020-04-24 | 42 |  |
| 70 |  | 监控评审 | 1d | 2020-04-27 | 2020-04-27 | 69 |  |

| ID | WBS | Task | Duration | Start | Finish | Predecessors |
| --- | --- | --- | --- | --- | --- | --- |
| 71 |  | 变更评审 | 1d | 2020-04-29 | 2020-04-29 | 70 |
| 72 |  | 例会 | 1d | 2020-05-18 | 2020-05-18 | 42 |
| 73 | 3.4 | **管理干系人** | 6d | 2020-04-23 | 2020-05-01 |  |
| 74 |  | 发布项目信息 | 1d | 2020-04-27 | 2020-04-28 | 42 |
| 75 |  | 报告监控指标 | 1d | 2020-04-30 | 2020-05-01 | 42 |
| 76 |  | 干系人沟通 | 1d | 2020-04-23 | 2020-04-24 | 42 |
| 77 | 3.5 | **团队建设** | 4.5d | 2020-04-23 | 2020-04-29 |  |
| 78 |  | 培训 | 2d | 2020-04-23 | 2020-04-24 | 42 |
| 79 |  | 娱乐活动 | 1d | 2020-04-23 | 2020-04-23 | 42 |
| 80 |  | 沟通 | 2d | 2020-04-27 | 2020-04-29 | 42 |
| 81 |  | 采购 | 2d | 2020-04-23 | 2020-04-24 | 42 |
| 82 |  | 项目验收 | 1d | 2020-06-22 | 2020-06-22 | 43 |
| 83 | 4 | **收尾** | 11d | 2020-07-01 | 2020-07-16 |  |
| 84 |  | 项目终验 | 3d | 2020-07-01 | 2020-07-06 | 82 |
| 85 |  | 结束采购 | 1d | 2020-07-01 | 2020-07-02 | 82 |
| 86 |  | 项目内部收尾 | 4d | 2020-07-11 | 2020-07-15 | 82 |

## Version 2 (data date 2020-03-27, saved 2020-05-06)

Last finish stays 2020-07-16.

Changed:

| ID | Task | Finish | Duration | Total float |
| --- | --- | --- | --- | --- |
| 7 | **规划** | 2020-04-21 → 2020-04-20 (-1d) | 29d → 28.88d | none → 0d |
